# QuanLiNhaHang

Schedule from MS Project, 2021-08-02 to 2021-10-20, costs in ₫.
Quản Lí dự án phần mềm
công ty TDV

## Calendars

- Standard: Mon-Sat 08:00-12:00, 13:00-17:00; Sun off. Exceptions (off unless hours are given): 2021-09-02 (Ngày nghỉ).

## Resources

| Resource | Rate |
| --- | --- |
| Đạt | 50000 |
| Trung | 40000 |
| Việt | 35000 |
| máy in | 500000 |
| chi phí hosting và domain | 2000000 |
| Máy chủ CSDL | 3000000 |
| chi phí liên lạc khách hàng |  |
| Chi phí đi lại gặp gỡ khách hàng |  |
| máy tính | 5000000 |

## Schedule

| ID | WBS | Task | Duration | Start | Finish | Predecessors | Total slack | Resources | Work | Cost |
| --- | --- | --- | --- | --- | --- | --- | --- | --- | --- | --- |
| 1 | 1 | **1.Xác định yêu cầu hệ thống** | 3d | 2021-08-02 | 2021-08-04 |  | 0d |  | 24h | 1,620,000 |
| 2 | 1.1 | 1.1 Khảo sát | 2d | 2021-08-02 | 2021-08-03 |  | 0d | Đạt | 16h | 800,000 |
| 3 | 1.2 | 1.2 Viết tài liệu đặc tả yêu cầu khách hàng | 1d | 2021-08-04 | 2021-08-04 | 2 | 0d | Trung; máy in | 8h | 820,000 |
| 4 | 2 | **2.Phân tích hệ thống** | 5d | 2021-08-05 | 2021-08-10 |  | 0d |  | 40h | 2,020,000 |
| 5 | 2.1 | 2.1 Phân tích yêu cầu | 4d | 2021-08-05 | 2021-08-09 | 3 | 0d | Việt | 32h | 1,120,000 |
| 6 | 2.2 | 2.2 Báo cáo trạng thái công việc | 1d | 2021-08-10 | 2021-08-10 | 5 | 0d | Đạt; máy in | 8h | 900,000 |
| 7 | 3 | **3.Thiết kê hệ thống** | 27d | 2021-08-11 | 2021-09-11 |  | 0d |  | 216h | 12,680,000 |
| 8 | 3.1 | 3.1 Viết tài liệu thiết kế use case | 5d | 2021-08-11 | 2021-08-16 | 6 | 0d | Trung | 40h | 1,600,000 |
| 9 | 3.2 | 3.2 Viết thiết kế chức năng | 3d | 2021-08-17 | 2021-08-19 | 8 | 0d | Việt | 24h | 840,000 |
| 10 | 3.3 | 3.3 Thiết kế xử lí | 4d | 2021-08-20 | 2021-08-24 | 9 | 0d | Đạt | 32h | 1,600,000 |
| 11 | 3.4 | 3.4 Thiết kê cơ sở dữ liệu | 5d | 2021-08-25 | 2021-08-30 | 10 | 0d | Trung; Máy chủ CSDL | 40h | 4,600,000 |
| 12 | 3.5 | 3.5 Hoàn thành tài liệu phân tích và thiết kế hệ thống | 2d | 2021-08-31 | 2021-09-01 | 8, 9, 10, 11 | 0d | Việt; máy in | 16h | 1,060,000 |
| 13 | 3.6 | 3.6 Thiết kê giao diện các module quản lí nhà hàng | 5d | 2021-09-03 | 2021-09-08 | 12 | 0d | Đạt | 40h | 2,000,000 |
| 14 | 3.7 | 3.7 Nhận ý kiến khách hàng | 1d | 2021-09-09 | 2021-09-09 | 13 | 0d | Trung; chi phí liên lạc khách hàng [0.1%] | 8h | 420,000 |
| 15 | 3.8 | 3.8 Chỉnh sửa và hoàn thiện giao diện | 2d | 2021-09-10 | 2021-09-11 | 14 | 0d | Việt | 16h | 560,000 |
| 16 | 4 | **4.Lập trình hệ thống** | 21d | 2021-09-13 | 2021-10-06 |  | 0d |  | 168h | 40,000,000 |
| 17 | 4.1 | 4.1 Lập trình module quản trị hệ thống | 5d | 2021-09-13 | 2021-09-17 | 15 | 0d | Đạt; Máy chủ CSDL; máy tính [200%] | 40h | 15,000,000 |
| 18 | 4.2 | 4.2 Lập trình module tra cứu , tìm kiếm | 4d | 2021-09-18 | 2021-09-22 | 17 | 0d | Trung; máy tính | 32h | 6,280,000 |
| 19 | 4.3 | 4.3 Lập trình module quản lí hóa đơn, giao dịch và thanh toán | 9d | 2021-09-23 | 2021-10-02 | 18 | 0d | Việt; máy tính [200%] | 72h | 12,520,000 |
| 20 | 4.4 | 4.4 Lập trình module tạo lập báo cáo | 3d | 2021-10-04 | 2021-10-06 | 19, 17, 18 | 0d | Đạt; máy tính | 24h | 6,200,000 |
| 21 | 5 | **5. Kiểm lỗi và sửa lỗi** | 10d | 2021-10-07 | 2021-10-18 | 16 | 0d |  | 80h | 3,860,000 |
| 22 | 5.1 | 5.1 Thức hiện các ca kiểm thử để test chức năng của sản phẩm trong tình huống đặt ra | 3d | 2021-10-07 | 2021-10-09 | 20, 16 | 0d | Trung | 24h | 960,000 |
| 23 | 5.2 | 5.2 Test giao diện sản phẩm | 2d | 2021-10-11 | 2021-10-12 | 22, 16 | 0d | Việt | 16h | 560,000 |
| 24 | 5.3 | 5.3 Thảo luận với khách hàng cùng kiểm tra sản phẩm | 1d | 2021-10-13 | 2021-10-13 | 22, 23 | 0d | Đạt; chi phí liên lạc khách hàng [0.1%] | 8h | 600,000 |
| 25 | 5.4 | 5.4 Chỉnh sửa và khắc phục lỗi | 3d | 2021-10-14 | 2021-10-16 | 24 | 0d | Trung | 24h | 960,000 |
| 26 | 5.5 | 5.5 Xây dựng báo cáo hoàn thiện sản phẩm | 1d | 2021-10-18 | 2021-10-18 | 25 | 0d | Việt; máy in | 8h | 780,000 |

| ID | WBS | Task | Duration | Start | Finish | Predecessors | Total slack | Resources | Work | Cost |
| --- | --- | --- | --- | --- | --- | --- | --- | --- | --- | --- |
| 27 | 6 | **6. Đào tạo và chuyển giao** | 2d | 2021-10-19 | 2021-10-20 |  | 0d |  | 16h | 3,420,000 |
| 28 | 6.1 | 6.1 Đào tạo | 1d | 2021-10-19 | 2021-10-19 | 26 | 0d | Đạt; Chi phí đi lại gặp gỡ khách hàng [0.1%] | 8h | 900,000 |
| 29 | 6.2 | 6.2 Bàn giao dự án và thanh lí hợp đồng | 1d | 2021-10-20 | 2021-10-20 | 28 | 0d | Trung; Chi phí đi lại gặp gỡ khách hàng [0.1%]; chi phí hosting và domain | 8h | 2,520,000 |
